Schedule from MS Project, 2009-11-08 to 2010-05-09.
Microsoft

## Calendars

- Стандартный: Mon-Fri 09:00-13:00, 14:00-18:00; Sat-Sun off.

## Resources

| Resource |
| --- |
| БР Бюджет на материалы |
| БР Трудозатраты |
| Контроллер Георгий |
| Законникова Оксана |
| Впарит Николай |
| Цифра Алла |
| Фунт Борис |
| Кривоглазьев Влад |
| Малярко Орест |
| Рисовалницкий Ростислав |
| Проектировщик |
| Криворукин Федор |
| Винглас Буд |
| Автокран |
| Бетононасос |
| Сварочный аппарат |
| Окно |
| Окно |
| Плотник 1 смена |
| Плотник 2 смена |
| Дверь |
| Раствор штукатурный |
| Раствор штукатурный |
| Маляр-штукатур 1 смена |
| Маляр-штукатур 2 смена |
| Бюрократов Фраг |
| Грошиссман Шекель |
| Актирование |
| Освоение |
| Непредвиденные расходы |
| Непредвиденные расходы |
| Доходы от реализации |
| Доходы от реализации |

## Schedule

| ID | WBS | Task | Type | Duration | Start | Finish | Predecessors | Total slack | Deadline | Resources | Work |
| --- | --- | --- | --- | --- | --- | --- | --- | --- | --- | --- | --- |
| 1 | 1 | **Коттедж** |  | 132d | 2009-11-08 | 2010-05-09 |  |  |  | БР Бюджет на материалы | 5502612h |
| 2 | 1.1 | Старт проекта | milestone, manual | 0d | 2009-11-08 | 2009-11-08 |  |  |  |  |  |
| 3 | 1.2 | **Инвестиционный этап** |  | 120.12d | 2009-11-16 | 2010-05-02 |  |  |  |  | 4541496h |
| 4 | 1.2.1 | **ТЭО Проекта** |  | 46.88d | 2009-11-08 | 2010-01-12 |  | 0d |  |  | 98h |
| 5 | 1.2.1.1 | Принято решение о начале этапа "ТЭО проекта" | manual | 20d | 2009-11-08 | 2009-12-03 | 2 |  |  |  |  |
| 6 | 1.2.1.2 | Юридический анализ ЗУ | manual | 10d | 2009-11-15 | 2009-11-26 | 5 |  |  | Законникова Оксана | 30h |
| 7 | 1.2.1.3 | Маркетинговый анализ ЗУ | manual | 6d | 2009-12-25 | 2010-01-04 | 6, 5 |  |  | Впарит Николай | 48h |
| 8 | 1.2.1.4 | Составление бизнес-плана | manual | 4d | 2010-01-04 | 2010-01-08 | 7 |  |  | Цифра Алла | 16h |
| 9 | 1.2.1.5 | Принятие решения по проекту | manual | 2d | 2010-01-08 | 2010-01-12 | 8 |  |  | Фунт Борис | 4h |
| 10 | 1.2.1.6 | Решение о начале проекта | milestone, manual | 0d | 2010-01-10 | 2010-01-10 | 2 |  | 2022-03-31 |  |  |
| 11 | 1.2.2 | **Землеотвод** |  | 41.12d | 2010-01-03 | 2010-02-26 | 10 |  |  |  | 86h |
| 12 | 1.2.2.1 | Разработка документации по землеустройству | manual | 15d | 2010-01-11 | 2010-01-29 | 10 |  |  | Кривоглазьев Влад | 30h |
| 13 | 1.2.2.2 | Согласование проекта отвода земли | manual | 10d | 2010-02-01 | 2010-02-12 | 12 |  |  | Кривоглазьев Влад | 24h |
| 14 | 1.2.2.3 | Заключение договора аренды | manual | 5d | 2010-02-15 | 2010-02-19 | 13 |  |  | Законникова Оксана | 32h |
| 15 | 1.2.2.4 | Договор аренды земли получен | milestone, manual | 0d | 2010-02-22 | 2010-02-22 | 14 |  | 2022-05-19 |  |  |
| 16 | 1.2.3 | **Проектирование** |  | 61.12d | 2010-01-03 | 2010-03-28 |  |  |  |  | 544h |
| 17 | 1.2.3.1 | Начало работа по проектированию | milestone, manual | 0d | 2010-02-21 | 2010-02-21 |  |  |  |  |  |
| 18 | 1.2.3.2 | **Эскизный проект** |  | 3d | 2010-03-01 | 2010-03-03 | 17 | 0d |  |  | 40h |
| 19 | 1.2.3.2.1 | Разработка эскизного проекта | manual | 3d | 2010-03-01 | 2010-03-03 | 11, 17 |  |  | Малярко Орест; Рисовалницкий Ростислав | 40h |
| 20 | 1.2.3.3 | **Стадия "П"** |  | 4d | 2010-03-04 | 2010-03-09 | 19 | 0d |  |  | 200h |
| 21 | 1.2.3.3.1 | Разработка стадии "П" | manual | 4d | 2010-03-04 | 2010-03-09 | 19 |  |  | Малярко Орест; Рисовалницкий Ростислав | 200h |
| 22 | 1.2.3.4 | **Рабочая документация** |  | 7d | 2010-03-10 | 2010-03-18 | 21 | 0d |  |  | 280h |
| 23 | 1.2.3.4.1 | Проработка рабочих чертежей | manual | 7d | 2010-03-10 | 2010-03-18 | 21 |  |  | Проектировщик [500%] | 280h |
| 24 | 1.2.3.5 | Передача рабочих чертежей Ген-подрядчика | manual | 1d | 2010-01-03 | 2010-01-03 |  |  |  | Контроллер Георгий; Криворукин Федор | 24h |
| 25 | 1.2.3.6 | РД принята | manual | 1d? | 2010-01-03 | 2010-01-03 |  |  | 2018-06-09 |  |  |

| ID | WBS | Task | Type | Duration | Start | Finish | Predecessors | Total slack | Constraint | Deadline | Resources | Work |
| --- | --- | --- | --- | --- | --- | --- | --- | --- | --- | --- | --- | --- |
| 26 | 1.2.4 | **Строительство** |  | 26d | 2010-03-19 | 2010-04-25 | 23 |  |  |  |  | 4540752h |
| 27 | 1.2.4.1 | Начало работы по строительству | milestone, manual | 0d | 2010-03-19 | 2010-03-19 | 23 |  |  |  |  |  |
| 28 | 1.2.4.2 | **Надземные работы** |  | 18d | 2010-03-19 | 2010-04-13 |  | 0d |  |  |  | 4520336h |
| 29 | 1.2.4.2.1 | Кирпичная кладка наружных стен | manual | 7d | 2010-03-19 | 2010-03-29 |  |  |  |  | Винглас Буд; Автокран; Бетононасос | 2800112h |
| 30 | 1.2.4.2.2 | Кирпичная кладка внутренних стен | manual | 5d | 2010-03-30 | 2010-04-05 | 29, 48 |  |  |  | Сварочный аппарат; Автокран; Бетононасос | 1000080h |
| 31 | 1.2.4.2.3 | Устройство кровли | manual | 6d | 2010-04-06 | 2010-04-13 | 30 |  |  |  | Винглас Буд; Автокран; Бетононасос; Сварочный аппарат | 720144h |
| 32 | 1.2.4.3 | **Отделочные работы** |  | 14d | 2010-03-31 | 2010-04-19 |  | 0d |  |  |  | 20416h |
| 33 | 1.2.4.3.1 | Монтаж окон | manual | 4d | 2010-04-14 | 2010-04-19 | 31 |  |  |  | Окно; Плотник 1 смена [400%]; Плотник 2 смена [400%] | 288h |
| 34 | 1.2.4.3.2 | Монтаж дверей | manual | 4d | 2010-04-04 | 2010-04-07 | 33 |  |  |  | Дверь; Плотник 1 смена [400%]; Плотник 2 смена [400%] | 288h |
| 35 | 1.2.4.3.3 | Штукатурные работы | manual | 10d | 2010-03-31 | 2010-04-13 | 34 |  |  |  | Раствор штукатурный [24000%]; Маляр-штукатур 1 смена [400%]; Маляр-штукатур 2 смена [400%] | 19840h |
| 36 | 1.2.4.4 | Строительство окончено | milestone, manual | 0d | 2010-04-14 | 2010-04-14 | 35 |  |  | 2022-07-21 |  |  |
| 37 | 1.2.5 | **Поставки** |  | 21d | 2010-03-19 | 2010-04-18 |  | 0d | finish no later than 2010-04-18 |  |  |  |
| 38 | 1.2.5.1 | **Поставка окон** |  | 21d | 2010-03-19 | 2010-04-18 |  | 0d |  |  |  |  |
| 39 | 1.2.5.1.1 | Поставщик выбран | milestone, manual | 0d | 2010-03-19 | 2010-03-19 |  |  |  |  | Бюрократов Фраг |  |
| 40 | 1.2.5.1.2 | Договор подписан | milestone, manual | 0d | 2010-03-21 | 2010-03-21 | 39 |  |  |  | Бюрократов Фраг |  |
| 41 | 1.2.5.1.3 | Предоплата осуществлена | milestone, manual | 0d | 2010-03-22 | 2010-03-22 | 40 |  |  |  | Бюрократов Фраг |  |
| 42 | 1.2.5.1.4 | Поставка осуществлена | milestone, manual | 0d | 2010-04-18 | 2010-04-18 | 41 |  |  |  | Бюрократов Фраг |  |
| 43 | 1.2.5.1.5 | Окончательная оплата | milestone, manual | 0d | 2010-04-18 | 2010-04-18 | 42 |  |  |  | Бюрократов Фраг |  |
| 44 | 1.2.5.1.6 | Договор поставки закрыт | milestone, manual | 0d | 2010-04-18 | 2010-04-18 | 43 |  |  |  | Бюрократов Фраг |  |
| 45 | 1.2.6 | **Взаиморасчёты с подрядчиками** |  | 21d | 2010-03-19 | 2010-04-18 |  | 0d |  |  |  | 16h |
| 46 | 1.2.6.1 | **Подрядчик по кладке стен** |  | 21d | 2010-03-19 | 2010-04-18 |  | 0d |  |  |  | 16h |
| 47 | 1.2.6.1.1 | Подрядчик выбран | milestone, manual | 0d | 2010-03-19 | 2010-03-19 |  |  |  |  | Грошиссман Шекель |  |
| 48 | 1.2.6.1.2 | Договор подписан | milestone, manual | 0d | 2010-03-19 | 2010-03-19 | 47 |  |  |  | Грошиссман Шекель |  |
| 49 | 1.2.6.1.3 | Окончательный расчёт по договору осуществлен | manual | 1d | 2010-04-18 | 2010-04-18 | 48 |  |  |  | Актирование; Освоение | 16h |
| 50 | 1.2.6.1.4 | Договор закрыт | milestone, manual | 0d | 2010-04-18 | 2010-04-18 | 48, 49 |  |  |  | Грошиссман Шекель |  |

| ID | WBS | Task | Type | Duration | Start | Finish | Predecessors | Total slack | Deadline | Resources | Work |
| --- | --- | --- | --- | --- | --- | --- | --- | --- | --- | --- | --- |
| 51 | 1.3 | **Реализация коттеджа** |  | 5.88d | 2009-11-16 | 2009-11-23 |  | 0d |  |  | 960060h |
| 52 | 1.3.1 | Согласование договора с клиентом | manual | 4d | 2009-11-16 | 2009-11-19 |  |  |  | Грошиссман Шекель; Непредвиденные расходы | 48h |
| 53 | 1.3.2 | Подписание договора с клиентом | manual | 2d | 2009-11-19 | 2009-11-23 | 52 |  |  | Фунт Борис | 8h |
| 54 | 1.3.3 | Оплата по договору | manual | 1d | 2009-11-16 | 2009-11-16 |  |  |  | Грошиссман Шекель; Доходы от реализации | 960004h |
| 55 | 1.3.4 | Крайний срок окончания реализации | milestone, manual | 0d | 2009-11-23 | 2009-11-23 | 53 |  | 2022-08-13 |  |  |
| 56 | 1.4 | Проект окончен | milestone, manual | 0d | 2010-05-09 | 2010-05-09 | 11, 55 |  |  |  |  |
